# Propeller-project file

Schedule from MS Project, 2013-12-25 to 2014-04-25, status date 2013-10-01, costs in $, A marks actual dates.

## Calendars

- Standard: Mon-Fri 08:00-12:00, 13:00-17:00; Sat 08:00-12:00; Sun off. Exceptions (off unless hours are given): 2014-02-28 to 2014-03-03 (Nghi Tết).

## Resources

| Resource | Rate |
| --- | --- |
| HaiDQ | 9 |
| BachDX | 9 |
| BanDV | 9 |
| LongNT | 9 |
| TungNT | 8 |

## Schedule

| ID | WBS | Task | Type | Duration | Start | Finish | Predecessors | Complete | Baseline start | Baseline finish | Baseline duration | Constraint | Deadline | Resources | Work | Actual work | Cost | Baseline cost | Actual cost |
| --- | --- | --- | --- | --- | --- | --- | --- | --- | --- | --- | --- | --- | --- | --- | --- | --- | --- | --- | --- |
| 1 | 1 | **Initiate** |  | 18.5d | 2013-12-25 A | 2014-01-16 A |  | 100% | 2013-10-01 | 2013-10-04 | 4d |  |  |  | 740h | 740h | 6,508 | 792 | 6,508 |
| 2 | 1.1 | Ideas, Brainstorming |  | 4d | 2013-12-25 A | 2013-12-30 A |  | 100% | 2013-10-01 | 2013-10-01 | 0.5d | start no earlier than 2013-12-25 |  | HaiDQ; BanDV; BachDX; TungNT; LongNT | 160h | 160h | 1,408 | 36 | 1,408 |
| 3 | 1.2 | Research existed product |  | 4d | 2013-12-30 A | 2014-01-03 A | 2 | 100% | 2013-10-01 | 2013-10-01 | 0.5d |  |  | HaiDQ; BachDX; TungNT; LongNT | 128h | 128h | 1,120 | 36 | 1,120 |
| 4 | 1.3 | Evaluation omponents available |  | 2d | 2014-01-03 A | 2014-01-06 A | 3 | 100% | 2013-10-02 | 2013-10-02 | 1d |  |  | HaiDQ; BanDV; BachDX; TungNT; LongNT | 80h | 80h | 704 | 72 | 704 |
| 5 | 1.4 | Technology research |  | 9d | 2014-01-03 A | 2014-01-15 A | 3 | 100% | 2013-10-02 | 2013-10-04 | 3d |  |  | BanDV; BachDX; LongNT; HaiDQ; TungNT | 360h | 360h | 3,168 | 648 | 3,168 |
| 6 | 1.5 | Scheduling project |  | 1.5d | 2014-01-15 A | 2014-01-16 A | 5 | 100% | 2013-10-04 | 2013-10-04 | 0d |  |  | HaiDQ | 12h | 12h | 108 |  | 108 |
| 7 | 2 | **Planing** |  | 4.5d | 2014-01-16 A | 2014-01-22 A | 6 | 100% |  |  |  |  |  |  | 112h | 112h | 976 |  | 976 |
| 8 | 2.1 | Product Description |  | 1d | 2014-01-17 A | 2014-01-20 A |  | 100% |  |  |  |  | 2014-01-20 | TungNT; BachDX | 16h | 16h | 136 |  | 136 |
| 9 | 2.2 | Report 1 | milestone | 0d | 2014-01-16 A | 2014-01-16 A |  | 100% |  |  |  |  |  |  |  |  |  |  |  |
| 10 | 2.3 | Design software structure |  | 3d | 2014-01-17 A | 2014-01-21 A |  | 100% |  |  |  |  |  | HaiDQ; LongNT | 48h | 48h | 432 |  | 432 |
| 11 | 2.4 | Report 2 | milestone | 0d | 2014-01-20 A | 2014-01-20 A |  | 100% |  |  |  | start no earlier than 2014-01-20 |  | BachDX; BanDV; HaiDQ; LongNT; TungNT |  |  |  |  |  |
| 12 | 2.5 | System Requirement Documentation |  | 3d | 2014-01-20 A | 2014-01-22 A | 10 | 100% |  |  |  |  |  | LongNT; TungNT | 48h | 48h | 408 |  | 408 |
| 13 | 3 | **Implementation** |  | 46d | 2014-01-23 A | 2014-03-25 A | 12 | 100% | 2013-10-07 | 2013-10-16 | 8d |  |  |  | 1476h | 1476h | 12,564 | 4,360 | 12,564 |
| 14 | 3.1 | Collecting components |  | 2d | 2014-01-23 A | 2014-01-24 A |  | 100% |  |  |  |  |  | TungNT; LongNT | 32h | 32h | 272 |  | 272 |
| 15 | 3.2 | Prepare testing kit |  | 2d | 2014-01-24 A | 2014-01-28 A | 14 | 100% | 2013-10-07 | 2013-10-11 | 5d |  |  | HaiDQ; BanDV; BachDX; LongNT; TungNT | 48h | 48h | 416 | 1,760 | 416 |
| 16 | 3.3 | Testing to allocate hardware limitation |  | 1.5d | 2014-01-28 A | 2014-01-29 A | 15 | 100% |  |  |  |  |  | LongNT; HaiDQ; BanDV | 36h | 36h | 324 |  | 324 |
| 17 | 3.4 | Report 3 | milestone | 0d | 2014-02-14 A | 2014-02-14 A |  | 100% |  |  |  |  |  | BachDX; BanDV; HaiDQ; LongNT; TungNT |  |  |  |  |  |
| 18 | 3.5 | Design schematic |  | 5d | 2014-01-31 A | 2014-02-06 A | 16 | 100% |  |  |  |  |  | LongNT; BachDX | 80h | 80h | 720 |  | 720 |
| 19 | 3.6 | Write firmware on Emulated system |  | 21d | 2014-02-08 A | 2014-03-10 A | 18, 22FF | 100% |  |  |  |  |  | BachDX; LongNT; HaiDQ | 504h | 504h | 4,536 |  | 4,536 |
| 20 | 3.7 | Design PCB |  | 5d | 2014-02-06 A | 2014-02-12 A | 18 | 100% |  |  |  |  |  | BanDV; TungNT | 80h | 80h | 680 |  | 680 |
| 21 | 3.8 | Report 4 | milestone | 0d | 2014-02-28 A | 2014-02-28 A |  | 100% |  |  |  |  |  | BanDV; HaiDQ; LongNT; TungNT; BachDX |  |  |  |  |  |
| 22 | 3.9 | Print circuit board |  | 7d | 2014-02-14 A | 2014-02-24 A | 20 | 100% | 2013-10-09 | 2013-10-15 | 5d | start no earlier than 2014-01-12 |  | HaiDQ; BanDV; BachDX; LongNT; TungNT | 280h | 280h | 2,464 | 1,760 | 2,464 |
| 23 | 3.10 | Experiment firmware on real hardware |  | 21d | 2014-02-24 A | 2014-03-25 A | 22 | 100% | 2013-10-14 | 2013-10-16 | 3d |  |  | BachDX; LongNT | 336h | 336h | 3,024 | 840 | 3,024 |
| 24 | 3.11 | Redesign schematic,circuit board v2 |  | 2d | 2014-02-24 A | 2014-02-26 A | 22 | 100% |  |  |  |  |  | LongNT; TungNT | 32h | 32h | 128 |  | 128 |
| 25 | 3.12 | Print redesigned circuit board v2 |  | 6d | 2014-02-26 A | 2014-03-08 A | 24 | 100% |  |  |  |  |  | BanDV; TungNT | 48h | 48h |  |  |  |
| 26 | 3.13 | Report 5 | milestone | 0d | 2014-03-14 A | 2014-03-14 A |  | 100% |  |  |  | finish no earlier than 2014-03-14 |  | BachDX; TungNT |  |  |  |  |  |

| ID | WBS | Task | Type | Duration | Start | Finish | Predecessors | Complete | Baseline start | Baseline finish | Baseline duration | Total slack | Constraint | Resources | Work | Actual work | Cost | Baseline cost | Actual cost |
| --- | --- | --- | --- | --- | --- | --- | --- | --- | --- | --- | --- | --- | --- | --- | --- | --- | --- | --- | --- |
| 27 | 4 | **Physical optimation** |  | 15d | 2014-03-10 A | 2014-03-27 A |  | 100% | 2013-10-17 | 2013-10-21 | 3d |  |  |  | 168h | 168h | 1,456 | 560 | 1,456 |
| 28 | 4.1 | Balance the rotating parts |  | 7d | 2014-03-10 A | 2014-03-18 A | 25 | 100% | 2013-10-17 | 2013-10-18 | 2d |  |  | BachDX; TungNT | 112h | 112h | 952 | 272 | 952 |
| 29 | 4.2 | Create stand structure for stability operating |  | 7d | 2014-03-19 A | 2014-03-27 A | 28 | 100% | 2013-10-21 | 2013-10-21 | 1d |  |  | BanDV | 56h | 56h | 504 | 288 | 504 |
| 30 | 5 | **Business Operation** |  | 7d | 2014-03-28 A | 2014-04-07 A | 29 | 100% |  |  |  |  |  |  | 152h | 152h | 1,296 |  | 1,296 |
| 31 | 5.1 | 24h durability testing |  | 1d | 2014-03-28 A | 2014-03-28 A |  | 100% |  |  |  |  |  |  |  |  |  |  |  |
| 32 | 5.2 | Complete coding and design documents |  | 5d | 2014-03-28 A | 2014-04-03 A | 29 | 100% |  |  |  |  |  | HaiDQ; BanDV; TungNT | 120h | 120h | 1,040 |  | 1,040 |
| 33 | 5.3 | Write User manual |  | 4d | 2014-03-28 A | 2014-04-02 A |  | 100% |  |  |  |  |  | TungNT | 32h | 32h | 256 |  | 256 |
| 34 | 5.4 | Report 6 | milestone | 0d | 2014-04-07 A | 2014-04-07 A |  | 100% |  |  |  |  | start no earlier than 2014-04-07 | TungNT |  |  |  |  |  |
| 35 | 6 | Delivery documents | milestone | 0d | 2014-04-15 | 2014-04-15 |  |  |  |  |  | 8.5d | start no earlier than 2014-04-15 |  |  |  |  |  |  |
| 36 | 7 | Delivery | milestone | 0d | 2014-04-25 | 2014-04-25 |  |  |  |  |  | 0d | start no earlier than 2014-04-25 |  |  |  |  |  |  |
